Schedule from OmniPlan, 2013-08-06 to 2013-10-23.
Project start 2013-08-06

## Resources

| Resource | Group |
| --- | --- |
| 资源 1 | staff |
| 设备 1 | equipment |
| 素材 1 | material |
| 群组 1 | group |
| 志泽 | staff |
| 阿毅 | staff |
| 夏贝 | staff |

## Schedule

| ID | WBS | Task | Start | Predecessors | Resources | Work |
| --- | --- | --- | --- | --- | --- | --- |
| 1 | 1 | **UI框架** |  |  |  |  |
| 2 | 1.1 | 自动换肤 | 2013-08-06 |  | 阿毅 | 16h |
| 3 | 1.2 | 滚动组件 | 2013-08-08 | 2 | 阿毅 | 40h |
| 4 | 1.3 | 列表组件 | 2013-08-15 | 3 | 阿毅 | 24h |
| 5 | 1.4 | Slider | 2013-08-20 | 4 | 阿毅 | 24h |
| 6 | 2 | **首页+主题详情** |  |  |  |  |
| 7 | 2.1 | 策划 | 2013-08-06 |  | 志泽 | 8h |
| 8 | 2.2 | 设计 |  |  |  | 8h |
| 9 | 2.3 | 主题列表开发 | 2013-08-23 | 5 | 阿毅 | 1h |
| 10 | 2.4 | 主题详情开发 | 2013-08-26 | 9 | 阿毅 | 1h |
| 11 | 3 | **画画** |  |  |  |  |
| 12 | 3.1 | 策划完善 | 2013-08-07 | 7 | 志泽 | 8h |
| 13 | 3.2 | 设计笔触 | 2013-08-27 | 10 | 阿毅 | 8h |
| 14 | 3.3 | 撤销恢复 | 2013-08-28 | 13 | 阿毅 | 80h |
| 15 | 3.4 | 播放 | 2013-09-11 | 14 | 阿毅 | 40h |
| 16 | 3.5 | UI开发 | 2013-09-18 | 15 | 阿毅 | 8h |
| 17 | 3.6 | 贴纸旋转 | 2013-09-22 | 16 | 阿毅 | 8h |
| 18 | 4 | **完成绘画（自动存储）** |  |  |  |  |
| 19 | 4.1 | 策划完善 | 2013-08-08 | 12 | 志泽 | 16h |
| 20 | 4.2 | 功能研发 | 2013-09-23 | 17 | 阿毅 | 16h |
| 21 | 5 | **画廊** |  |  |  |  |
| 22 | 5.1 | 策划完善 | 2013-08-12 | 19 | 志泽 | 16h |
| 23 | 5.2 | 画廊列表研发 | 2013-09-25 | 20 | 阿毅 | 40h |
| 24 | 5.3 | 作品详情 | 2013-10-09 | 23 | 阿毅 | 8h |
| 25 | 5.4 | 作品浏览 | 2013-10-10 | 24 | 阿毅 | 16h |

Notes:
- 6: a. / 每日一画推荐 / b. / 主题包展示 / c. / 作品推荐 / d. / 画廊入口 / e. / 商店入口 / f. / 致父母 / h. / 个人信息
- 11: a. / 选择画笔／橡皮 / 改变画笔大小 / b. / 选择颜色 / 基本颜色／专业颜色／吸取画面中的已有颜色 / c. / 撤销 / d. / 恢复 / e. / 清除 / 确定 / f. / 完成 / 确定
- 18: a. / 播放 / 快／中／慢 / b. / 上传 / c. / 分享 / d. / 录音
- 21: a. / 所有作品列表 / b. / 精选推荐 / d. / 我的作品集 / 上传／删除

| ID | WBS | Task | Start | Predecessors | Resources | Work |
| --- | --- | --- | --- | --- | --- | --- |
| 26 | 6 | **用户相关** |  |  |  |  |
| 27 | 6.1 | 登陆注册策划 | 2013-08-14 | 22 | 志泽 | 8h |
| 28 | 6.2 | 登陆注册开发 | 2013-10-12 | 25 | 阿毅 | 16h |
| 29 | 6.3 | 个人信息策划 | 2013-08-15 | 27 | 志泽 | 16h |
| 30 | 6.4 | 个人信息开发 | 2013-10-15 | 28 | 阿毅 | 16h |
| 31 | 7 | **商店** |  |  |  |  |
| 32 | 7.1 | 数据策划 | 2013-08-19 | 29 | 志泽 | 24h |
| 33 | 7.2 | 界面策划 | 2013-08-22 | 32 | 志泽 | 16h |
| 34 | 7.3 | 商店列表 | 2013-10-17 | 30 | 阿毅 | 8h |
| 35 | 7.4 | 商品详情 | 2013-10-18 | 34 | 阿毅 | 24h |
| 36 | 8 | **致父母** |  |  |  |  |
| 37 | 8.1 | 策划 | 2013-08-26 | 33 | 志泽 | 8h |
| 38 | 8.2 | 开发 | 2013-10-23 | 35 | 阿毅 | 4h |

Notes:
- 26: 贴纸收集
